# 新闻头条-范围规划

Schedule from MS Project, 2020-03-09 to 2020-06-23, costs in ¥.

## Calendars

- 标准: Mon-Fri 08:00-12:00, 13:00-17:00; Sat-Sun off.

## Resources

| Resource | Group | Rate | Notes |
| --- | --- | --- | --- |
| 蔡子轩 | 技术专家 | 40 | 项目发起人 |
| 刘万里 | 测试专家 | 40 | 测试专家 |
| 安佳 | UE/UI设计师 | 40 | UE/UI设计师 |
| 李啸昆 | 技术专家 | 40 | 技术专家 |
| 林桃 | 项目经理 | 40 | 项目经理 |
| 周宣 | 产品经理 | 40 | 产品经理 |

## Schedule

| ID | WBS | Task | Type | Duration | Start | Finish | Predecessors | Resources | Work | Cost |
| --- | --- | --- | --- | --- | --- | --- | --- | --- | --- | --- |
| 1 | 1 | **论证** |  | 9d | 2020-03-09 | 2020-03-19 |  |  | 88h | 3,520 |
| 2 | 1.1 | 项目愿景 | manual | 1d | 2020-03-09 | 2020-03-09 |  | 蔡子轩 | 8h | 320 |
| 3 | 1.2 | 商业机会 | manual | 1d | 2020-03-09 | 2020-03-09 |  | 林桃 | 8h | 320 |
| 4 | 1.3 | 问题描述 | manual | 1d | 2020-03-10 | 2020-03-10 |  | 安佳 | 8h | 320 |
| 5 | 1.4 | 用户分析 | manual | 1d | 2020-03-11 | 2020-03-11 |  | 刘万里 | 8h | 320 |
| 6 | 1.5 | 技术可行性分析 | manual | 1d | 2020-03-12 | 2020-03-12 |  | 刘万里 | 8h | 320 |
| 7 | 1.6 | 资源分析 | manual | 1d | 2020-03-13 | 2020-03-13 |  | 蔡子轩 | 8h | 320 |
| 8 | 1.7 | 收益分析 | manual | 1d | 2020-03-11 | 2020-03-11 |  | 安佳 | 8h | 320 |
| 9 | 1.8 | 墨刀原型 | manual | 2d | 2020-03-17 | 2020-03-18 |  | 刘万里; 周宣 | 32h | 1,280 |
| 10 | 2 | **启动** |  | 6d | 2020-03-19 | 2020-03-26 |  |  | 88h | 1,600 |
| 11 | 2.1 | 组建核心团队 | manual | 1d | 2020-03-19 | 2020-03-19 | 9 | 蔡子轩 | 8h | 320 |
| 12 | 2.2 | 干系人登记册 | manual | 1d | 2020-03-20 | 2020-03-20 | 11 | 刘万里; 周宣 | 16h | 640 |
| 13 | 2.3 | 里程碑 | manual | 1d | 2020-03-23 | 2020-03-23 | 12 | 林桃 | 8h | 320 |
| 14 | 2.4 | 制定项目章程 | manual | 1d | 2020-03-23 | 2020-03-23 | 12 | 李啸昆 | 8h | 320 |
| 15 | 2.5 | 项目启动大会 | manual | 1d | 2020-03-24 | 2020-03-24 | 14 | 安佳; 蔡子轩; 李啸昆; 林桃; 刘万里; 周宣 | 48h |  |
| 16 | 3 | **规划** |  | 13d | 2020-03-26 | 2020-04-13 |  |  | 232h | 9,280 |
| 17 | 3.1 | **规划范围** |  | 2d | 2020-03-26 | 2020-03-27 |  |  | 56h | 2,240 |
| 18 | 3.1.1 | 制定需求说明书 | manual | 1d | 2020-03-25 | 2020-03-25 | 15 | 安佳 | 8h | 320 |
| 19 | 3.1.2 | 界面设计 | manual | 2d | 2020-03-26 | 2020-03-27 | 18 | 蔡子轩 | 16h | 640 |
| 20 | 3.1.3 | 详细设计说明书 | manual | 1d | 2020-03-26 | 2020-03-26 | 18 | 李啸昆 | 8h | 320 |
| 21 | 3.1.4 | 范围说明书 | manual | 1d | 2020-03-26 | 2020-03-26 | 18 | 林桃 | 8h | 320 |
| 22 | 3.1.5 | 创建WBS | manual | 1d | 2020-03-26 | 2020-03-26 | 18 | 刘万里 | 8h | 320 |
| 23 | 3.1.6 | 形成范围基准 | manual | 1d | 2020-03-27 | 2020-03-27 | 22 | 周宣 | 8h | 320 |
| 24 | 3.2 | **规划时间** |  | 3d | 2020-03-27 | 2020-03-31 |  |  | 48h | 1,920 |
| 25 | 3.2.1 | 排列工作包顺序 | manual | 1d | 2020-03-27 | 2020-03-27 |  | 安佳 | 8h | 320 |
| 26 | 3.2.2 | 估算资源 | manual | 1d | 2020-03-27 | 2020-03-27 |  | 李啸昆 | 8h | 320 |
| 27 | 3.2.3 | 估算持续时间 | manual | 1d | 2020-03-27 | 2020-03-27 |  | 林桃 | 8h | 320 |
| 28 | 3.2.4 | 制定制度计划 | manual | 1d | 2020-03-27 | 2020-03-27 |  | 刘万里 | 8h | 320 |
| 29 | 3.2.5 | 形成进度基准 | manual | 2d | 2020-03-30 | 2020-03-31 | 28 | 周宣 | 16h | 640 |

| ID | WBS | Task | Type | Duration | Start | Finish | Predecessors | Resources | Work | Cost |
| --- | --- | --- | --- | --- | --- | --- | --- | --- | --- | --- |
| 30 | 3.3 | **规划成本** |  | 3d | 2020-04-01 | 2020-04-03 |  |  | 32h | 1,280 |
| 31 | 3.3.1 | 项目成本估量 | manual | 1d | 2020-04-01 | 2020-04-01 | 29 | 安佳 | 8h | 320 |
| 32 | 3.3.2 | 项目预算 | manual | 1d | 2020-04-02 | 2020-04-02 | 31 | 刘万里; 蔡子轩 | 16h | 640 |
| 33 | 3.3.3 | 形成范围基准 | manual | 1d | 2020-04-03 | 2020-04-03 | 32 | 周宣 | 8h | 320 |
| 34 | 3.4 | **规划质量** |  | 2d | 2020-04-06 | 2020-04-07 |  |  | 32h | 1,280 |
| 35 | 3.4.1 | 制定测试计划 | manual | 1d | 2020-04-06 | 2020-04-06 | 33 | 安佳; 蔡子轩 | 16h | 640 |
| 36 | 3.4.2 | 制定测试用例 | manual | 1d | 2020-04-07 | 2020-04-07 | 35 | 林桃; 刘万里 | 16h | 640 |
| 37 | 3.5 | **规划人力资源** |  | 2d | 2020-04-08 | 2020-04-09 |  |  | 24h | 960 |
| 38 | 3.5.1 | 制定人力资源计划 | manual | 1d | 2020-04-08 | 2020-04-08 |  | 蔡子轩; 李啸昆 | 16h | 640 |
| 39 | 3.5.2 | 制定人员配备管理 | manual | 1d | 2020-04-09 | 2020-04-09 | 38 | 刘万里 | 8h | 320 |
| 40 | 3.6 | **规划沟通** |  | 1d | 2020-04-09 | 2020-04-09 |  |  | 8h | 320 |
| 41 | 3.6.1 | 制定沟通管理计划 | manual | 1d | 2020-04-09 | 2020-04-09 |  | 林桃 | 8h | 320 |
| 42 | 3.7 | **规划风险** |  | 3d | 2020-04-09 | 2020-04-13 |  |  | 24h | 960 |
| 43 | 3.7.1 | 识别风险 | manual | 1d | 2020-04-09 | 2020-04-09 |  | 安佳 | 8h | 320 |
| 44 | 3.7.2 | 风险分析 | manual | 1d | 2020-04-10 | 2020-04-10 | 43 | 安佳 | 8h | 320 |
| 45 | 3.7.3 | 制定风险登记册 | manual | 1d | 2020-04-13 | 2020-04-13 | 44 | 周宣 | 8h | 320 |
| 46 | 3.8 | 规划整合 | manual | 1d | 2020-04-13 | 2020-04-13 |  | 蔡子轩 | 8h | 320 |
| 48 | 4 | **干系人** |  | 3d | 2020-04-14 | 2020-04-16 |  |  | 40h | 1,600 |
| 49 | 4.1 | 发布项目信息 | manual | 1d | 2020-04-14 | 2020-04-14 | 46 | 安佳 | 8h | 320 |
| 50 | 4.2 | 干系人沟通 | manual | 1d | 2020-04-15 | 2020-04-15 | 49 | 李啸昆; 林桃 | 16h | 640 |
| 51 | 4.3 | 干系人手册 | manual | 1d | 2020-04-16 | 2020-04-16 | 50 | 刘万里; 周宣 | 16h | 640 |
| 52 | 5 | **执行** |  | 40d | 2020-04-16 | 2020-06-10 |  |  | 1192h | 38,080 |
| 53 | 5.1 | **团队建设** |  | 6d | 2020-04-16 | 2020-04-23 |  |  | 240h |  |
| 54 | 5.1.1 | 培训 | manual | 2d | 2020-04-17 | 2020-04-20 | 48 | 安佳; 蔡子轩; 李啸昆; 林桃; 刘万里; 周宣 | 96h |  |
| 55 | 5.1.2 | 沟通 | manual | 2d | 2020-04-21 | 2020-04-22 | 54 | 安佳; 蔡子轩; 李啸昆; 林桃; 刘万里; 周宣 | 96h |  |
| 56 | 5.1.3 | 组建团队 | manual | 1d | 2020-04-23 | 2020-04-23 | 55 | 安佳; 蔡子轩; 李啸昆; 林桃; 刘万里; 周宣 | 48h |  |

| ID | WBS | Task | Type | Duration | Start | Finish | Predecessors | Resources | Work | Cost |
| --- | --- | --- | --- | --- | --- | --- | --- | --- | --- | --- |
| 57 | 5.2 | **项目执行** |  | 34d | 2020-04-24 | 2020-06-10 | 53 |  | 848h | 33,920 |
| 58 | 5.2.1 | **用户模块** |  | 6d | 2020-04-24 | 2020-05-01 | 55 |  | 112h | 4,480 |
| 59 | 5.2.1.1 | 注册登录 | manual | 3d | 2020-04-24 | 2020-04-28 |  | 李啸昆; 周宣 | 48h | 1,920 |
| 60 | 5.2.1.2 | 修改信息 | manual | 2d | 2020-04-29 | 2020-04-30 | 59 | 安佳; 刘万里 | 32h | 1,280 |
| 61 | 5.2.1.3 | 修改密码 | manual | 2d | 2020-04-29 | 2020-04-30 | 59 | 蔡子轩 | 16h | 640 |
| 62 | 5.2.1.4 | 个人信息管理界面 | manual | 2d | 2020-04-29 | 2020-04-30 | 59 | 林桃 | 16h | 640 |
| 63 | 5.2.2 | **浏览模块** |  | 7d | 2020-05-04 | 2020-05-12 | 61 |  | 240h | 9,600 |
| 64 | 5.2.2.1 | 首页 | manual | 4d | 2020-05-04 | 2020-05-07 |  | 李啸昆; 刘万里 | 64h | 2,560 |
| 65 | 5.2.2.2 | 要闻推荐 | manual | 4d | 2020-05-04 | 2020-05-07 |  | 蔡子轩; 林桃 | 64h | 2,560 |
| 66 | 5.2.2.3 | 我的推荐 | manual | 4d | 2020-05-04 | 2020-05-07 |  | 周宣; 安佳 | 64h | 2,560 |
| 67 | 5.2.2.4 | 要闻搜索 | manual | 3d | 2020-05-08 | 2020-05-12 |  | 安佳; 李啸昆 | 48h | 1,920 |
| 68 | 5.2.3 | **资讯发布模块** |  | 7d | 2020-05-08 | 2020-05-18 |  |  | 112h | 4,480 |
| 69 | 5.2.3.1 | 身份认证 | manual | 2d | 2020-05-08 | 2020-05-11 |  | 刘万里 | 16h | 640 |
| 70 | 5.2.3.2 | 真实身份编辑 | manual | 2d | 2020-05-12 | 2020-05-13 | 69 | 周宣 | 16h | 640 |
| 71 | 5.2.3.3 | 资讯编辑/修改 | manual | 2d | 2020-05-13 | 2020-05-14 | 69 | 安佳 | 16h | 640 |
| 72 | 5.2.3.4 | 发布信息 | manual | 2d | 2020-05-12 | 2020-05-13 | 69 | 蔡子轩 | 16h | 640 |
| 73 | 5.2.3.5 | 资讯发布编辑 | manual | 2d | 2020-05-14 | 2020-05-15 | 72 | 周宣 | 16h | 640 |
| 74 | 5.2.3.6 | 删除信息 | manual | 2d | 2020-05-15 | 2020-05-18 | 72 | 李啸昆; 林桃 | 32h | 1,280 |
| 75 | 5.2.4 | **资讯管理模块** |  | 2d | 2020-05-15 | 2020-05-18 |  |  | 40h | 1,600 |
| 76 | 5.2.4.1 | 资讯浏览记录 | manual | 1d | 2020-05-14 | 2020-05-14 |  | 林桃 | 8h | 320 |
| 77 | 5.2.4.2 | 资讯评价模块 | manual | 1d | 2020-05-14 | 2020-05-14 |  | 李啸昆 | 8h | 320 |
| 78 | 5.2.4.3 | 资讯收藏模块 | manual | 1d | 2020-05-14 | 2020-05-14 |  | 刘万里 | 8h | 320 |
| 79 | 5.2.4.4 | 标签模块 | manual | 1d | 2020-05-15 | 2020-05-15 |  | 刘万里; 蔡子轩 | 16h | 640 |
| 80 | 5.2.5 | **多媒体模块** |  | 5d | 2020-05-18 | 2020-05-22 |  |  | 152h | 6,080 |
| 81 | 5.2.5.1 | 文本管理 | manual | 2d | 2020-05-18 | 2020-05-19 |  | 蔡子轩; 刘万里 | 32h | 1,280 |
| 82 | 5.2.5.2 | 图片管理 | manual | 2d | 2020-05-19 | 2020-05-20 |  | 李啸昆 | 16h | 640 |
| 83 | 5.2.5.3 | 视频管理 | manual | 4d | 2020-05-19 | 2020-05-22 |  | 林桃 | 32h | 1,280 |
| 84 | 5.2.5.4 | 音频管理 | manual | 3d | 2020-05-20 | 2020-05-22 |  | 周宣; 蔡子轩; 刘万里 | 72h | 2,880 |

| ID | WBS | Task | Type | Duration | Start | Finish | Predecessors | Resources | Work | Cost |
| --- | --- | --- | --- | --- | --- | --- | --- | --- | --- | --- |
| 85 | 5.2.6 | **专业种类模块** |  | 4d | 2020-05-25 | 2020-05-28 |  |  | 56h | 2,240 |
| 86 | 5.2.6.1 | 新建 | manual | 2d | 2020-05-25 | 2020-05-26 |  | 刘万里 | 16h | 640 |
| 87 | 5.2.6.2 | 修改 | manual | 2d | 2020-05-26 | 2020-05-27 |  | 周宣 | 16h | 640 |
| 88 | 5.2.6.3 | 检索 | manual | 2d | 2020-05-26 | 2020-05-27 |  | 安佳 | 16h | 640 |
| 89 | 5.2.6.4 | 删除 | manual | 1d | 2020-05-27 | 2020-05-27 |  | 刘万里 | 8h | 320 |
| 90 | 5.2.7 | **设置模块** |  | 5d | 2020-05-28 | 2020-06-03 |  |  | 136h | 5,440 |
| 91 | 5.2.7.1 | 基本设置 | manual | 3d | 2020-05-28 | 2020-06-01 |  | 蔡子轩; 林桃; 刘万里 | 72h | 2,880 |
| 92 | 5.2.7.2 | 检查更新 | manual | 3d | 2020-05-28 | 2020-06-01 |  | 安佳; 周宣 | 48h | 1,920 |
| 93 | 5.2.7.3 | 帮助反馈 | manual | 2d | 2020-06-02 | 2020-06-03 |  | 李啸昆 | 16h | 640 |
| 94 | 5.3 | **测试** |  | 5d | 2020-06-04 | 2020-06-10 | 93 |  | 104h | 4,160 |
| 95 | 5.3.1 | 模块测试 | manual | 3d | 2020-06-04 | 2020-06-08 |  | 蔡子轩; 李啸昆; 安佳 | 72h | 2,880 |
| 96 | 5.3.2 | 编写测试报告 | manual | 2d | 2020-06-09 | 2020-06-10 | 95 | 李啸昆; 刘万里 | 32h | 1,280 |
| 97 | 6 | **监控** |  | 40d | 2020-04-16 | 2020-06-10 |  |  |  |  |
| 98 | 6.1 | 各项指标监控 | manual | 40d | 2020-04-16 | 2020-06-10 |  |  |  |  |
| 99 | 6.2 | 监控评审 | manual | 40d | 2020-04-16 | 2020-06-10 |  |  |  |  |
| 100 | 6.3 | 变更评审 | manual | 40d | 2020-04-16 | 2020-06-10 |  |  |  |  |
| 101 | 6.4 | 例会 | manual | 40d | 2020-04-16 | 2020-06-10 |  |  |  |  |
| 102 | 7 | **收尾** |  | 7d | 2020-06-15 | 2020-06-23 |  |  | 208h | 2,560 |
| 103 | 7.1 | 项目终验 | manual | 4d | 2020-06-15 | 2020-06-18 |  | 蔡子轩; 李啸昆 | 64h | 2,560 |
| 104 | 7.2 | 项目内部收尾 | manual | 3d | 2020-06-19 | 2020-06-23 |  | 安佳; 蔡子轩; 李啸昆; 林桃; 刘万里; 周宣 | 144h |  |
